# caTRIP-SemanticBits-05092006

Schedule from MS Project, 2006-05-01 to 2006-10-27.

## Calendars

- Standard: Mon-Fri 08:00-12:00, 13:00-17:00; Sat-Sun off.

## Schedule

| ID | WBS | Task | Duration | Start | Finish | Predecessors | Total slack | Free slack | Constraint |
| --- | --- | --- | --- | --- | --- | --- | --- | --- | --- |
| 1 | 1 | **Software Development Cycle I** | 130d? | 2006-05-01 | 2006-10-27 |  | 0d |  |  |
| 2 | 1.1 | **Inception** | 20d? | 2006-05-01 | 2006-05-26 |  | 110d |  |  |
| 3 | 1.1.1 | Develop overall software development plan | 10d | 2006-05-01 | 2006-05-12 |  | 120d |  | finish no earlier than 2006-05-12 |
| 4 | 1.1.2 | Develop phase and iteration plan | 10d | 2006-05-01 | 2006-05-12 |  | 110d | 0d | finish no earlier than 2006-05-12 |
| 5 | 1.1.3 | Set up development environment | 10d? | 2006-05-01 | 2006-05-12 |  | 120d |  | start no earlier than 2006-05-01 |
| 6 | 1.1.4 | Gather scientific use cases/translational research scenarios | 10d? | 2006-05-15 | 2006-05-26 | 4 | 110d |  | finish no earlier than 2006-05-26 |
| 7 | 1.1.5 | Gather system use cases | 10d? | 2006-05-15 | 2006-05-26 |  | 30d |  | finish no earlier than 2006-05-26 |
| 8 | 1.1.6 | Gather non-functional requirements | 10d? | 2006-05-15 | 2006-05-26 |  | 30d |  | finish no earlier than 2006-05-26 |
| 9 | 1.1.7 | Identify data elements by analyzing use cases | 5d | 2006-05-22 | 2006-05-26 |  | 30d |  | start no earlier than 2006-05-22 |
| 10 | 1.1.8 | Identify systems to be used (caBIG and non-caBIG) | 10d? | 2006-05-15 | 2006-05-26 |  | 30d |  | finish no earlier than 2006-05-26 |
| 11 | 1.1.9 | Identify the data sets | 5d? | 2006-05-22 | 2006-05-26 |  | 30d |  | finish no earlier than 2006-05-26 |
| 12 | 1.1.10 | Develop scope and vision document | 12d | 2006-05-11 | 2006-05-26 |  | 110d |  | finish no earlier than 2006-05-26 |
| 13 | 1.1.11 | Identify and document risks | 12d | 2006-05-11 | 2006-05-26 |  | 110d |  | finish no earlier than 2006-05-26 |
| 14 | 1.1.12 | Develop communication plan | 12d | 2006-05-11 | 2006-05-26 |  | 110d |  | start no earlier than 2006-05-11 |
| 15 | 1.2 | **Elaboration** | 60d? | 2006-05-29 | 2006-08-18 |  | 50d |  |  |
| 16 | 1.2.1 | **Iteration I** | 30d? | 2006-05-29 | 2006-07-07 |  | 80d |  |  |
| 17 | 1.2.1.1 | Finalize scientific use cases | 30d? | 2006-05-29 | 2006-07-07 |  | 30d |  | finish no earlier than 2006-07-07 |
| 18 | 1.2.1.2 | Finalize system use cases | 30d? | 2006-05-29 | 2006-07-07 |  | 30d |  | finish no earlier than 2006-07-07 |
| 19 | 1.2.1.3 | Install and configure the identified caBIG systems | 20d? | 2006-06-05 | 2006-06-30 |  | 5d |  | finish no earlier than 2006-06-30 |
| 20 | 1.2.1.4 | Install and configure caGrid 1.0 infrastructure | 5d | 2006-05-29 | 2006-06-02 |  | 25d |  | start no earlier than 2006-05-29 |
| 21 | 1.2.1.5 | **Develop API for non-caBIG systems** | 20d? | 2006-06-05 | 2006-06-30 |  | 85d |  |  |
| 22 | 1.2.1.5.1 | Develop UML domain model | 15d | 2006-06-05 | 2006-06-23 |  | 10d |  | start no earlier than 2006-06-05 |
| 23 | 1.2.1.5.2 | Perform O/R mapping using Hibernate | 15d? | 2006-06-05 | 2006-06-23 |  | 10d |  | start no earlier than 2006-06-05 |
| 24 | 1.2.1.5.3 | Perform semantic annotation | 15d? | 2006-06-05 | 2006-06-23 |  | 5d | 0d | start no earlier than 2006-06-05 |
| 25 | 1.2.1.5.4 | Generate API using caCORE SDK | 5d | 2006-06-26 | 2006-06-30 | 24 | 5d |  |  |

| ID | WBS | Task | Duration | Start | Finish | Predecessors | Total slack | Free slack | Constraint |
| --- | --- | --- | --- | --- | --- | --- | --- | --- | --- |
| 26 | 1.2.1.6 | **Design,develop and test distributed query engine architecture** | 30d? | 2006-05-29 | 2006-07-07 |  | 80d |  |  |
| 27 | 1.2.1.6.1 | Finalize federated query schema | 5d | 2006-05-29 | 2006-06-02 |  | 25d |  | start no earlier than 2006-05-29 |
| 28 | 1.2.1.6.2 | Design distributed query engine - Create UML artifacts | 30d? | 2006-05-29 | 2006-07-07 |  | 30d |  | start no earlier than 2006-05-29 |
| 29 | 1.2.1.6.3 | Code and Test | 30d? | 2006-05-29 | 2006-07-07 |  | 30d |  | start no earlier than 2006-05-29 |
| 30 | 1.2.1.7 | **Design, develop and test core architecture for GUI** | 20d? | 2006-06-12 | 2006-07-07 |  | 80d |  |  |
| 31 | 1.2.1.7.1 | Create UML artifacts - class and sequence diagram | 20d? | 2006-06-12 | 2006-07-07 |  | 30d |  | start no earlier than 2006-06-12 |
| 32 | 1.2.1.7.2 | Implement and test core architecture | 20d? | 2006-06-12 | 2006-07-07 |  | 30d |  | start no earlier than 2006-06-12 |
| 33 | 1.2.1.7.3 | Develop prototype | 20d? | 2006-06-12 | 2006-07-07 |  | 30d |  | start no earlier than 2006-06-12 |
| 34 | 1.2.1.8 | **Design, develop and test security** | 20d? | 2006-06-12 | 2006-07-07 |  | 80d |  |  |
| 35 | 1.2.1.8.1 | Integrate Duke IDP with Dorian | 10d? | 2006-06-12 | 2006-06-23 |  | 80d | 0d | finish no earlier than 2006-06-23 |
| 36 | 1.2.1.8.2 | Integrate security of local systems with Dorian | 10d? | 2006-06-26 | 2006-07-07 | 35 | 80d |  |  |
| 37 | 1.2.2 | **Iteration II** | 30d? | 2006-07-10 | 2006-08-18 |  | 50d |  |  |
| 38 | 1.2.2.1 | **Complete API development for non-caBIG sytems** | 20d? | 2006-07-10 | 2006-08-04 |  | 60d |  |  |
| 39 | 1.2.2.1.1 | Enhance UML domain model | 20d? | 2006-07-10 | 2006-08-04 |  | 60d |  | start no earlier than 2006-07-10 |
| 40 | 1.2.2.1.2 | Complete O/R mapping | 20d? | 2006-07-10 | 2006-08-04 |  | 60d |  | start no earlier than 2006-07-10 |
| 41 | 1.2.2.1.3 | Complete semantic annotation | 10d? | 2006-07-10 | 2006-07-21 |  | 60d | 0d | start no earlier than 2006-07-10 |
| 42 | 1.2.2.1.4 | Generate API using caCORE SDK | 10d? | 2006-07-24 | 2006-08-04 | 41 | 60d |  |  |
| 43 | 1.2.2.2 | Implement security | 20d | 2006-07-10 | 2006-08-04 |  | 60d |  | start no earlier than 2006-07-10 |
| 44 | 1.2.2.3 | Develop data services for caBIG/non-caBIG systems | 10d | 2006-08-07 | 2006-08-18 |  | 50d |  | start no earlier than 2006-08-07 |
| 45 | 1.2.2.4 | **Design develop and test distributed query engine architecture** | 30d | 2006-07-10 | 2006-08-18 |  | 50d |  |  |
| 46 | 1.2.2.4.1 | Enhance UML artifacts | 10d | 2006-07-10 | 2006-07-21 |  | 70d |  | start no earlier than 2006-07-10 |
| 47 | 1.2.2.4.2 | Code and Test | 30d | 2006-07-10 | 2006-08-18 |  | 50d |  | start no earlier than 2006-07-10 |
| 48 | 1.2.2.5 | **Design, develop and test GUI** | 30d? | 2006-07-10 | 2006-08-18 |  | 50d |  |  |
| 49 | 1.2.2.5.1 | Enhance UML artifacts | 20d? | 2006-07-10 | 2006-08-04 |  | 60d |  | finish no earlier than 2006-08-04 |
| 50 | 1.2.2.5.2 | Enhance prototype | 30d | 2006-07-10 | 2006-08-18 |  | 50d |  | start no earlier than 2006-07-10 |

| ID | WBS | Task | Duration | Start | Finish | Total slack | Constraint |
| --- | --- | --- | --- | --- | --- | --- | --- |
| 52 | 1.3 | **Construction** | 40d | 2006-08-21 | 2006-10-13 | 10d |  |
| 53 | 1.3.1 | **Iteration I** | 20d | 2006-08-21 | 2006-09-15 | 30d |  |
| 54 | 1.3.1.1 | Enhance data services for caBIG/non-caBIG systems | 5d | 2006-08-21 | 2006-08-25 | 45d | start no earlier than 2006-08-21 |
| 55 | 1.3.1.2 | Implement distributed query engine | 20d | 2006-08-21 | 2006-09-15 | 30d | start no earlier than 2006-08-21 |
| 56 | 1.3.1.3 | Implement GUI | 20d | 2006-08-21 | 2006-09-15 | 30d | start no earlier than 2006-08-21 |
| 57 | 1.3.2 | **Iteration II** | 20d | 2006-09-18 | 2006-10-13 | 10d |  |
| 58 | 1.3.2.1 | Develop data service for caTRIP | 5d | 2006-09-18 | 2006-09-22 | 25d | start no earlier than 2006-09-18 |
| 59 | 1.3.2.2 | Complete distributed query engine | 20d | 2006-09-18 | 2006-10-13 | 10d | start no earlier than 2006-09-18 |
| 60 | 1.3.2.3 | Complete GUI | 20d | 2006-09-18 | 2006-10-13 | 10d | start no earlier than 2006-09-18 |
| 61 | 1.3.2.4 | System Testing | 20d | 2006-09-18 | 2006-10-13 | 10d | start no earlier than 2006-09-18 |
| 62 | 1.3.2.5 | Develop draft technical architecture guide | 10d | 2006-10-02 | 2006-10-13 | 10d | start no earlier than 2006-10-02 |
| 63 | 1.4 | **Transition** | 10d | 2006-10-16 | 2006-10-27 | 0d |  |
| 64 | 1.4.1 | Complete system testing | 10d | 2006-10-16 | 2006-10-27 | 0d | start no earlier than 2006-10-16 |
| 65 | 1.4.2 | Complete technical architecture guide | 10d | 2006-10-16 | 2006-10-27 | 0d | start no earlier than 2006-10-16 |
