# caTRIP_Project_Plan

Schedule from MS Project, 2006-05-01 to 2007-05-15, A marks actual dates.
Duke University

## Calendars

- Standard: Mon-Fri 08:00-12:00, 13:00-17:00; Sat-Sun off.

## Resources

| Resource |
| --- |
| Jeff |
| Patrick |
| Bob |
| Ram |
| Raj |
| Mark |
| Chris |
| Mark.Chris |
| Bioinformatics |
| domain expert |
| Jamie |
| Everyone |
| SB |
| Srini |
| Sanjeev |
| Bill |
| Vinay |
| Janet |
| TBD |
| Wilma |
| Ramakrishna |
| Bill? |

## Schedule

| ID | WBS | Task | Duration | Start | Finish | Predecessors | Complete | Constraint | Resources | Work | Actual work |
| --- | --- | --- | --- | --- | --- | --- | --- | --- | --- | --- | --- |
| 1 | 1 | **Phase I** | 135d? | 2006-05-01 A | 2006-11-03 A |  | 100% |  |  | 20796h | 20796h |
| 2 | 1.1 | **Inception** | 25d | 2006-05-01 A | 2006-06-02 A |  | 100% |  |  | 4264h | 4264h |
| 3 | 1.1.1 | Draft project management plan | 25d | 2006-05-01 A | 2006-06-02 A |  | 100% |  | Patrick; Bob; Ram | 600h | 600h |
| 4 | 1.1.2 | Develop phase and iteration plan | 10d | 2006-05-01 A | 2006-05-12 A |  | 100% | finish no earlier than 2006-05-12 | SB | 80h | 80h |
| 5 | 1.1.3 | Draft communications plan | 25d | 2006-05-01 A | 2006-06-02 A |  | 100% |  | Patrick; Bob; Ram | 600h | 600h |
| 6 | 1.1.4 | Draft risk management matrix | 25d | 2006-05-01 A | 2006-06-02 A |  | 100% |  | Patrick; Ram | 400h | 400h |
| 7 | 1.1.5 | Develop scope and vision document | 12d | 2006-05-11 A | 2006-05-26 A |  | 100% | finish no earlier than 2006-05-26 | Patrick | 96h | 96h |
| 8 | 1.1.6 | Draft test plan | 25d | 2006-05-01 A | 2006-06-02 A |  | 100% |  | Patrick; Bob | 400h | 400h |
| 9 | 1.1.7 | Setup Gforge | 10d | 2006-05-01 A | 2006-05-12 A |  | 100% |  | Patrick | 80h | 80h |
| 10 | 1.1.8 | Setup development environment | 10d | 2006-05-15 A | 2006-05-26 A | 9 | 100% |  | Patrick | 80h | 80h |
| 11 | 1.1.9 | Define initial problem scenerios | 25d | 2006-05-01 A | 2006-06-02 A |  | 100% |  | Patrick; Bob; Raj | 600h | 600h |
| 12 | 1.1.10 | Define problem scenarios | 2d | 2006-05-24 A | 2006-05-25 A |  | 100% | finish no earlier than 2006-05-25 | Raj; Bob | 32h | 32h |
| 13 | 1.1.11 | Define initial scientific use cases | 20d | 2006-05-01 A | 2006-05-26 A |  | 100% |  | Patrick; Bob; Raj | 480h | 480h |
| 14 | 1.1.12 | Define initial system use cases | 20d | 2006-05-01 A | 2006-05-26 A |  | 100% |  | SB | 160h | 160h |
| 15 | 1.1.13 | Define initial datasets | 20d | 2006-05-01 A | 2006-05-26 A |  | 100% |  | Patrick; Bob; Raj | 480h | 480h |
| 16 | 1.1.14 | **Setup testbed** | 11d | 2006-05-01 A | 2006-05-15 A |  | 100% |  | Jeff | 176h | 176h |
| 17 | 1.1.14.1 | Purchase testbed | 10d | 2006-05-01 A | 2006-05-12 A |  | 100% |  | Jeff | 80h | 80h |
| 18 | 1.1.14.2 | Add testbed to backup cycle | 1d | 2006-05-15 A | 2006-05-15 A | 17 | 100% |  | Jeff | 8h | 8h |
| 19 | 1.2 | **Elaboration** | 60d? | 2006-06-05 A | 2006-08-25 A | 2 | 100% |  |  | 12736h | 12736h |
| 20 | 1.2.1 | **Iteration 1** | 30d? | 2006-06-05 A | 2006-07-14 A |  | 100% |  |  | 6996h | 6996h |
| 21 | 1.2.1.1 | **Draft use case document** | 30d? | 2006-06-05 A | 2006-07-14 A |  | 100% |  |  | 608h | 608h |
| 22 | 1.2.1.1.1 | Finalize scientific use cases | 30d? | 2006-06-05 A | 2006-07-14 A |  | 100% | finish no earlier than 2006-07-07 | SB | 240h | 240h |
| 23 | 1.2.1.1.2 | Finalize system use cases | 15d? | 2006-06-19 A | 2006-07-07 A |  | 100% | finish no earlier than 2006-07-07 | Sanjeev; Bill | 240h | 240h |
| 24 | 1.2.1.1.3 | Draft use cases | 8d | 2006-06-05 A | 2006-06-14 A |  | 100% | finish no earlier than 2006-06-01 | Patrick; Bob | 128h | 128h |

| ID | WBS | Task | Duration | Start | Finish | Predecessors | Complete | Constraint | Resources | Work | Actual work |
| --- | --- | --- | --- | --- | --- | --- | --- | --- | --- | --- | --- |
| 25 | 1.2.1.2 | **Draft requirements and specifications document** | 10d | 2006-06-05 A | 2006-06-16 A |  | 100% |  | Patrick; Bill; Ram | 520h | 520h |
| 26 | 1.2.1.2.1 | Translate use cases into requirements | 5d | 2006-06-05 A | 2006-06-09 A |  | 100% |  | Patrick; Bill | 80h | 80h |
| 27 | 1.2.1.2.2 | Create test traceability matrix | 5d | 2006-06-12 A | 2006-06-16 A | 26 | 100% |  | Patrick | 40h | 40h |
| 28 | 1.2.1.2.3 | Draft architecture UML diagrams | 10d | 2006-06-05 A | 2006-06-16 A |  | 100% |  | Patrick; Ram | 160h | 160h |
| 29 | 1.2.1.3 | Draft dataset document (draft) | 20d | 2006-06-05 A | 2006-06-30 A |  | 100% |  | Patrick; Bob; Mark | 480h | 480h |
| 30 | 1.2.1.4 | **Dataset preparation** | 7d | 2006-06-05 A | 2006-06-13 A |  | 100% |  | Raj; Bob; Mark; Patrick | 408h | 408h |
| 31 | 1.2.1.4.1 | **Dataset acquisition** | 7d | 2006-06-05 A | 2006-06-13 A |  | 100% |  | Raj; Bob | 184h | 184h |
| 32 | 1.2.1.4.1.1 | Determine available datasets | 1d | 2006-06-05 A | 2006-06-05 A |  | 100% | finish no earlier than 2006-05-25 | Raj; Bob | 16h | 16h |
| 33 | 1.2.1.4.1.2 | Match datasets to use cases | 1d | 2006-06-06 A | 2006-06-06 A | 32 | 100% |  | Raj; Bob | 16h | 16h |
| 34 | 1.2.1.4.1.3 | Fill out IRB forms | 5d | 2006-06-07 A | 2006-06-13 A | 33 | 100% |  | Bob | 40h | 40h |
| 35 | 1.2.1.5 | **Tool installation** | 22.5d | 2006-06-05 A | 2006-07-05 A |  | 100% |  | Bioinformatics; Mark; Bill; Sanjeev | 1700h | 1700h |
| 36 | 1.2.1.5.1 | Install and configure caGrid 1.0 infrastructure | 5d | 2006-06-05 A | 2006-06-09 A |  | 100% | start no earlier than 2006-05-29 | Sanjeev | 40h | 40h |
| 37 | 1.2.1.5.2 | **caTissue Core** | 22.5d | 2006-06-05 A | 2006-07-05 A |  | 100% |  | Bioinformatics; Mark; Bill | 740h | 740h |
| 38 | 1.2.1.5.2.1 | Document CDE extension | 5d | 2006-06-05 A | 2006-06-09 A |  | 100% |  | Mark | 40h | 40h |
| 39 | 1.2.1.5.2.2 | Extend model | 5d | 2006-06-12 A | 2006-06-16 A | 38 | 100% |  | Mark | 40h | 40h |
| 40 | 1.2.1.5.2.3 | Apply model to tool | 5d | 2006-06-19 A | 2006-06-23 A | 39 | 100% |  | Bioinformatics | 40h | 40h |
| 41 | 1.2.1.5.2.4 | Develop and Install data service | 2.5d | 2006-06-26 A | 2006-06-28 A | 40 | 100% |  | Bioinformatics; Bill | 40h | 40h |
| 42 | 1.2.1.5.2.5 | Install tool | 5d | 2006-06-28 A | 2006-07-05 A | 41 | 100% |  | Bioinformatics | 40h | 40h |
| 43 | 1.2.1.5.3 | **CAE** | 22.5d | 2006-06-05 A | 2006-07-05 A |  | 100% |  |  | 200h | 200h |
| 44 | 1.2.1.5.3.1 | Document CDE extension | 5d | 2006-06-05 A | 2006-06-09 A |  | 100% |  | Mark | 40h | 40h |
| 45 | 1.2.1.5.3.2 | Extend model | 5d | 2006-06-12 A | 2006-06-16 A | 44 | 100% |  | Mark | 40h | 40h |
| 46 | 1.2.1.5.3.3 | Apply model to tool | 5d | 2006-06-19 A | 2006-06-23 A | 45 | 100% |  | Bioinformatics | 40h | 40h |
| 47 | 1.2.1.5.3.4 | Develop and Install data service | 2.5d | 2006-06-26 A | 2006-06-28 A | 46 | 100% |  | Bioinformatics; Bill | 40h | 40h |
| 48 | 1.2.1.5.3.5 | Install tool | 5d | 2006-06-28 A | 2006-07-05 A | 47 | 100% |  | Bioinformatics | 40h | 40h |

| ID | WBS | Task | Duration | Start | Finish | Predecessors | Complete | Constraint | Resources | Work | Actual work |
| --- | --- | --- | --- | --- | --- | --- | --- | --- | --- | --- | --- |
| 49 | 1.2.1.6 | **Develop API for non-caBIG systems (Tumor Registry)** | 20d? | 2006-06-05 A | 2006-06-30 A |  | 100% |  | SB | 920h | 920h |
| 50 | 1.2.1.6.1 | Develop UML domain model | 15d | 2006-06-05 A | 2006-06-23 A |  | 100% | start no earlier than 2006-06-05 | Ram; Bill; Wilma; Patrick | 480h | 480h |
| 51 | 1.2.1.6.2 | Perform O/R mapping using Hibernate | 15d? | 2006-06-05 A | 2006-06-23 A |  | 100% | start no earlier than 2006-06-05 | Bill | 120h | 120h |
| 52 | 1.2.1.6.3 | Perform semantic annotation | 15d? | 2006-06-05 A | 2006-06-23 A |  | 100% | start no earlier than 2006-06-05 | Bill | 120h | 120h |
| 53 | 1.2.1.6.4 | Generate API using caCORE SDK | 5d | 2006-06-26 A | 2006-06-30 A | 52 | 100% |  | Bill | 40h | 40h |
| 54 | 1.2.1.7 | **Design,develop and test distributed query engine architecture** | 30d? | 2006-06-05 A | 2006-07-14 A |  | 100% |  | Srini; Ram | 1000h | 1000h |
| 55 | 1.2.1.7.1 | Finalize federated query schema | 2.5d | 2006-06-05 A | 2006-06-07 A |  | 100% | start no earlier than 2006-05-29 | Srini; Ram | 40h | 40h |
| 56 | 1.2.1.7.2 | Design distributed query engine - Create UML artifacts | 15d? | 2006-06-05 A | 2006-06-23 A |  | 100% | start no earlier than 2006-05-29 | Srini; Ram | 240h | 240h |
| 57 | 1.2.1.7.3 | Code and Test | 30d? | 2006-06-05 A | 2006-07-14 A |  | 100% | start no earlier than 2006-05-29 | Srini | 240h | 240h |
| 58 | 1.2.1.8 | **Design, develop and test core architecture for GUI** | 20d? | 2006-06-12 A | 2006-07-07 A |  | 100% |  | Sanjeev; Ram | 800h | 800h |
| 59 | 1.2.1.8.1 | Create UML artifacts - class and sequence diagram | 10d? | 2006-06-12 A | 2006-06-23 A |  | 100% | start no earlier than 2006-06-12 | Sanjeev; Ram | 160h | 160h |
| 60 | 1.2.1.8.2 | Implement and test core architecture | 10d? | 2006-06-12 A | 2006-06-23 A |  | 100% | start no earlier than 2006-06-12 | Sanjeev; Ram | 160h | 160h |
| 61 | 1.2.1.8.3 | Develop prototype | 20d? | 2006-06-12 A | 2006-07-07 A |  | 100% | start no earlier than 2006-06-12 | Sanjeev | 160h | 160h |
| 62 | 1.2.1.9 | **Basic testing** | 5d | 2006-06-05 A | 2006-06-09 A |  | 100% |  | Patrick; Mark | 320h | 320h |
| 63 | 1.2.1.9.1 | **Setup testing environment** | 5d | 2006-06-05 A | 2006-06-09 A |  | 100% |  | Patrick | 80h | 80h |
| 64 | 1.2.1.9.1.1 | Implement setup/tear down of services | 5d | 2006-06-05 A | 2006-06-09 A |  | 100% |  | Patrick | 40h | 40h |
| 65 | 1.2.1.9.2 | **Graphical user interface** | 5d | 2006-06-05 A | 2006-06-09 A |  | 100% |  | Mark; Patrick | 160h | 160h |
| 66 | 1.2.1.9.2.1 | Create draft QA test plan | 5d | 2006-06-05 A | 2006-06-09 A |  | 100% |  | Mark; Patrick | 80h | 80h |
| 67 | 1.2.1.10 | **Security integration** | 10d | 2006-06-05 A | 2006-06-16 A |  | 100% |  | Patrick; Jeff | 240h | 240h |
| 68 | 1.2.1.10.1 | Identify Duke IdP | 10d | 2006-06-05 A | 2006-06-16 A |  | 100% |  | Jeff | 80h | 80h |
| 69 | 1.2.2 | **Iteration 2** | 30d? | 2006-07-17 A | 2006-08-25 A | 20 | 100% |  |  | 5740h | 5740h |
| 70 | 1.2.2.1 | **Final use case document** | 10d | 2006-07-17 A | 2006-07-28 A |  | 100% |  | Patrick | 160h | 160h |
| 71 | 1.2.2.1.1 | Finalize problem scenarios | 5d | 2006-07-17 A | 2006-07-21 A |  | 100% |  | Patrick | 40h | 40h |
| 72 | 1.2.2.1.2 | Finalize use cases | 5d | 2006-07-24 A | 2006-07-28 A | 71 | 100% |  | Patrick | 40h | 40h |

| ID | WBS | Task | Duration | Start | Finish | Predecessors | Complete | Constraint | Resources | Work | Actual work |
| --- | --- | --- | --- | --- | --- | --- | --- | --- | --- | --- | --- |
| 73 | 1.2.2.2 | **Final requirements and specifications document** | 15d | 2006-07-17 A | 2006-08-04 A |  | 100% |  | Patrick | 240h | 240h |
| 74 | 1.2.2.2.1 | Finalize requirements | 5d | 2006-07-17 A | 2006-07-21 A |  | 100% |  | Patrick | 40h | 40h |
| 75 | 1.2.2.2.2 | Finalize traceability matrix | 5d | 2006-07-24 A | 2006-07-28 A | 74 | 100% |  | Patrick | 40h | 40h |
| 76 | 1.2.2.2.3 | Finalize UML | 5d | 2006-07-31 A | 2006-08-04 A | 75 | 100% |  | Patrick | 40h | 40h |
| 77 | 1.2.2.3 | Draft dataset document (final) | 10d | 2006-07-17 A | 2006-07-28 A |  | 100% |  | Patrick; Bob; Mark | 240h | 240h |
| 78 | 1.2.2.4 | Construct draft test data | 10d | 2006-07-17 A | 2006-07-28 A |  | 100% |  | Mark | 80h | 80h |
| 79 | 1.2.2.5 | **Tool installation** | 22.5d | 2006-07-17 A | 2006-08-16 A |  | 100% |  | Bioinformatics; Mark | 1100h | 1100h |
| 80 | 1.2.2.5.1 | **caIntegrator** | 22.5d | 2006-07-17 A | 2006-08-16 A |  | 100% |  | Bioinformatics; Mark; Srini | 740h | 740h |
| 81 | 1.2.2.5.1.1 | Document CDE extension | 5d | 2006-07-17 A | 2006-07-21 A |  | 100% |  | Mark | 40h | 40h |
| 82 | 1.2.2.5.1.2 | Extend model | 5d | 2006-07-24 A | 2006-07-28 A | 81 | 100% |  | Mark | 40h | 40h |
| 83 | 1.2.2.5.1.3 | Apply model to tool | 5d | 2006-07-31 A | 2006-08-04 A | 82 | 100% |  | Bioinformatics | 40h | 40h |
| 84 | 1.2.2.5.1.4 | Develop and Install data service | 2.5d | 2006-08-07 A | 2006-08-09 A | 83 | 100% |  | Bioinformatics; Srini | 40h | 40h |
| 85 | 1.2.2.5.1.5 | Install tool | 5d | 2006-08-09 A | 2006-08-16 A | 84 | 100% |  | Bioinformatics | 40h | 40h |
| 86 | 1.2.2.6 | **Complete API development for non-caBIG sytems** | 20d? | 2006-07-17 A | 2006-08-11 A |  | 100% |  | SB | 640h | 640h |
| 87 | 1.2.2.6.1 | Enhance UML domain model | 20d? | 2006-07-17 A | 2006-08-11 A |  | 100% | start no earlier than 2006-07-10 | Ram | 160h | 160h |
| 88 | 1.2.2.6.2 | Complete O/R mapping | 20d? | 2006-07-17 A | 2006-08-11 A |  | 100% | start no earlier than 2006-07-10 | Sanjeev | 160h | 160h |
| 89 | 1.2.2.6.3 | Complete semantic annotation | 10d? | 2006-07-17 A | 2006-07-28 A |  | 100% | start no earlier than 2006-07-10 | SB | 80h | 80h |
| 90 | 1.2.2.6.4 | Generate API using caCORE SDK | 10d? | 2006-07-31 A | 2006-08-11 A | 89 | 100% |  | Sanjeev | 80h | 80h |
| 91 | 1.2.2.7 | Implement security | 6.67d | 2006-07-17 A | 2006-07-25 A |  | 100% | start no earlier than 2006-07-10 | Srini; Ram; Vinay | 160h | 160h |
| 92 | 1.2.2.8 | Develop data services for caBIG/non-caBIG systems | 2.5d | 2006-08-07 A | 2006-08-09 A |  | 100% | start no earlier than 2006-08-07 | Bill; Sanjeev; Srini; Ram | 80h | 80h |
| 93 | 1.2.2.9 | **Design develop and test distributed query engine architecture** | 30d | 2006-07-17 A | 2006-08-25 A |  | 100% |  | Srini | 560h | 560h |
| 94 | 1.2.2.9.1 | Enhance UML artifacts | 10d | 2006-07-17 A | 2006-07-28 A |  | 100% | start no earlier than 2006-07-10 | Srini | 80h | 80h |
| 95 | 1.2.2.9.2 | Code and Test | 30d | 2006-07-17 A | 2006-08-25 A |  | 100% | start no earlier than 2006-07-10 | Srini | 240h | 240h |
| 96 | 1.2.2.10 | **Design, develop and test GUI** | 30d? | 2006-07-17 A | 2006-08-25 A |  | 100% |  | Sanjeev | 640h | 640h |
| 97 | 1.2.2.10.1 | Enhance UML artifacts | 20d? | 2006-07-17 A | 2006-08-11 A |  | 100% | finish no earlier than 2006-08-04 | Sanjeev | 160h | 160h |
| 98 | 1.2.2.10.2 | Enhance prototype | 30d | 2006-07-17 A | 2006-08-25 A |  | 100% | start no earlier than 2006-07-10 | Sanjeev | 240h | 240h |

| ID | WBS | Task | Duration | Start | Finish | Predecessors | Complete | Constraint | Resources | Work | Actual work |
| --- | --- | --- | --- | --- | --- | --- | --- | --- | --- | --- | --- |
| 99 | 1.2.2.11 | **System testing** | 20d | 2006-07-17 A | 2006-08-11 A |  | 100% |  | Patrick; Mark | 1840h | 1840h |
| 100 | 1.2.2.11.1 | Draft testing report | 20d | 2006-07-17 A | 2006-08-11 A |  | 100% |  | Patrick; Mark | 320h | 320h |
| 101 | 1.2.2.11.2 | **Domain services** | 15d | 2006-07-17 A | 2006-08-04 A |  | 100% |  | Patrick; Mark | 480h | 480h |
| 102 | 1.2.2.11.2.1 | Translate use cases into queries | 10d | 2006-07-17 A | 2006-07-28 A |  | 100% |  | Patrick; Mark | 160h | 160h |
| 103 | 1.2.2.11.2.2 | Implement base data test | 5d | 2006-07-31 A | 2006-08-04 A | 102 | 100% |  | Patrick; Mark | 80h | 80h |
| 104 | 1.2.2.11.3 | **Distributed query engine** | 15d | 2006-07-17 A | 2006-08-04 A |  | 100% |  | Patrick; Mark | 480h | 480h |
| 105 | 1.2.2.11.3.1 | Translate use cases into queries | 10d | 2006-07-17 A | 2006-07-28 A |  | 100% |  | Patrick; Mark | 160h | 160h |
| 106 | 1.2.2.11.3.2 | Implement base data test | 5d | 2006-07-31 A | 2006-08-04 A | 105 | 100% |  | Patrick; Mark | 80h | 80h |
| 107 | 1.2.2.11.4 | **Graphical user interface** | 15d | 2006-07-17 A | 2006-08-04 A |  | 100% |  | Mark | 240h | 240h |
| 108 | 1.2.2.11.4.1 | Final QA test plan | 15d | 2006-07-17 A | 2006-08-04 A |  | 100% |  | Mark | 120h | 120h |
| 109 | 1.3 | **Construction** | 40d | 2006-08-28 A | 2006-10-20 A | 19 | 100% |  |  | 3500h | 3500h |
| 110 | 1.3.1 | **Iteration 1** | 20d | 2006-08-28 A | 2006-09-22 A |  | 100% |  |  | 2060h | 2060h |
| 111 | 1.3.1.1 | Final dataset document (draft) | 20d | 2006-08-28 A | 2006-09-22 A |  | 100% |  |  |  |  |
| 112 | 1.3.1.2 | **Dataset preparation** | 20d | 2006-08-28 A | 2006-09-22 A |  | 100% |  |  | 160h | 160h |
| 113 | 1.3.1.2.1 | Construct demo datasets | 20d | 2006-08-28 A | 2006-09-22 A |  | 100% |  | Mark | 160h | 160h |
| 114 | 1.3.1.3 | Enhance data services for caBIG/non-caBIG systems | 5d | 2006-08-28 A | 2006-09-01 A |  | 100% | start no earlier than 2006-08-21 | SB | 40h | 40h |
| 115 | 1.3.1.4 | Implement distributed query engine | 20d | 2006-08-28 A | 2006-09-22 A |  | 100% | start no earlier than 2006-08-21 | SB | 160h | 160h |
| 116 | 1.3.1.5 | **Implement GUI** | 15d | 2006-08-28 A | 2006-09-15 A |  | 100% |  | Sanjeev | 240h | 240h |
| 117 | 1.3.1.5.1 | Implement simplified GUI | 15d | 2006-08-28 A | 2006-09-15 A |  | 100% |  | Sanjeev | 120h | 120h |
| 118 | 1.3.1.6 | **Testing** | 20d | 2006-08-28 A | 2006-09-22 A |  | 100% |  | Patrick; Mark | 1460h | 1460h |
| 119 | 1.3.1.6.1 | **Domain services** | 20d | 2006-08-28 A | 2006-09-22 A |  | 100% |  | Patrick; Mark | 480h | 480h |
| 120 | 1.3.1.6.1.1 | Implement data test | 20d | 2006-08-28 A | 2006-09-22 A |  | 100% |  | Mark | 160h | 160h |
| 121 | 1.3.1.6.2 | **Distributed query engine** | 20d | 2006-08-28 A | 2006-09-22 A |  | 100% |  | Patrick; Mark | 480h | 480h |
| 122 | 1.3.1.6.2.1 | Implement data test | 20d | 2006-08-28 A | 2006-09-22 A |  | 100% |  | Mark | 160h | 160h |

| ID | WBS | Task | Duration | Start | Finish | Predecessors | Complete | Constraint | Resources | Work | Actual work |
| --- | --- | --- | --- | --- | --- | --- | --- | --- | --- | --- | --- |
| 123 | 1.3.1.6.3 | **Graphical user interface** | 3.75d | 2006-08-28 A | 2006-08-31 A |  | 100% |  | Mark; domain expert | 180h | 180h |
| 124 | 1.3.1.6.3.1 | Perform QA tests | 3.75d | 2006-08-28 A | 2006-08-31 A |  | 100% |  | Mark; Raj; Janet; TBD | 120h | 120h |
| 125 | 1.3.2 | **Iteration 2** | 20d | 2006-09-25 A | 2006-10-20 A | 110 | 100% |  |  | 1440h | 1440h |
| 126 | 1.3.2.1 | Final dataset document (final) | 15d | 2006-09-25 A | 2006-10-13 A |  | 100% |  |  |  |  |
| 127 | 1.3.2.2 | **Construct demo datasets** | 10d | 2006-09-25 A | 2006-10-06 A |  | 100% |  | Mark | 160h | 160h |
| 128 | 1.3.2.2.1 | Construct tumor registry dataset | 5d | 2006-09-25 A | 2006-09-29 A |  | 100% |  | Mark | 40h | 40h |
| 129 | 1.3.2.2.2 | Construct GEMS Illumina dataset | 5d | 2006-10-02 A | 2006-10-06 A | 128 | 100% |  | Mark | 40h | 40h |
| 130 | 1.3.2.3 | Complete distributed query engine | 20d | 2006-09-25 A | 2006-10-20 A |  | 100% | start no earlier than 2006-09-18 | SB | 160h | 160h |
| 131 | 1.3.2.4 | **Complete GUI** | 10d | 2006-09-25 A | 2006-10-06 A |  | 100% |  | SB | 80h | 80h |
| 132 | 1.3.2.4.1 | Complete simplified GUI | 10d | 2006-09-25 A | 2006-10-06 A |  | 100% |  |  |  |  |
| 133 | 1.3.2.4.2 | Create GUI installer | 5d | 2006-09-25 A | 2006-09-29 A |  | 100% |  |  |  |  |
| 134 | 1.3.2.5 | Develop draft technical architecture guide | 10d | 2006-10-02 A | 2006-10-13 A |  | 100% | start no earlier than 2006-10-02 | SB | 80h | 80h |
| 135 | 1.3.2.6 | **Deployment** | 5d | 2006-09-25 A | 2006-09-29 A |  | 100% |  |  |  |  |
| 136 | 1.3.2.6.1 | Deploy public services | 5d | 2006-09-25 A | 2006-09-29 A |  | 100% |  |  |  |  |
| 137 | 1.3.2.7 | **System testing** | 20d | 2006-09-25 A | 2006-10-20 A |  | 100% |  |  | 960h | 960h |
| 138 | 1.3.2.7.1 | **Domain services** | 20d | 2006-09-25 A | 2006-10-20 A |  | 100% |  | Mark | 320h | 320h |
| 139 | 1.3.2.7.1.1 | Final testing report | 20d | 2006-09-25 A | 2006-10-20 A |  | 100% |  | Mark | 160h | 160h |
| 140 | 1.3.2.7.2 | **Distributed query engine** | 20d | 2006-09-25 A | 2006-10-20 A |  | 100% |  | Mark | 320h | 320h |
| 141 | 1.3.2.7.2.1 | Final testing report | 20d | 2006-09-25 A | 2006-10-20 A |  | 100% |  | Mark | 160h | 160h |
| 142 | 1.3.2.7.3 | **Graphical user interface** | 20d | 2006-09-25 A | 2006-10-20 A |  | 100% |  | Mark | 320h | 320h |
| 143 | 1.3.2.7.3.1 | Final testing report | 20d | 2006-09-25 A | 2006-10-20 A |  | 100% |  | Mark | 160h | 160h |
| 144 | 1.4 | **Transition** | 10d | 2006-10-23 A | 2006-11-03 A | 109 | 100% |  |  | 80h | 80h |
| 145 | 1.4.1 | Final testing | 10d | 2006-10-23 A | 2006-11-03 A |  | 100% |  |  |  |  |
| 146 | 1.4.2 | **Final documentation** | 10d | 2006-10-23 A | 2006-11-03 A |  | 100% |  |  | 80h | 80h |
| 147 | 1.4.2.1 | Complete technical architecture guide | 10d | 2006-10-23 A | 2006-11-03 A |  | 100% | start no earlier than 2006-10-16 | SB | 80h | 80h |

| ID | WBS | Task | Duration | Start | Finish | Predecessors | Complete | Constraint | Resources | Work | Actual work |
| --- | --- | --- | --- | --- | --- | --- | --- | --- | --- | --- | --- |
| 148 | 1.5 | **Meetings** | 107d | 2006-05-01 A | 2006-09-26 A |  | 100% |  |  | 56h | 56h |
| 149 | 1.5.1 | Project kickoff | 1d | 2006-05-01 A | 2006-05-01 A |  | 100% |  | Jamie; Bob; Patrick | 24h | 24h |
| 150 | 1.5.2 | First F2F | 2d | 2006-05-24 A | 2006-05-25 A |  | 100% | finish no earlier than 2006-05-25 | Everyone | 16h | 16h |
| 151 | 1.5.3 | Second F2F | 2d | 2006-09-25 A | 2006-09-26 A |  | 100% | start no earlier than 2006-09-25 | Everyone | 16h | 16h |
| 152 | 1.6 | **Deliverables** | 132d | 2006-05-02 A | 2006-11-01 A | 149 | 100% |  |  | 160h | 160h |
| 153 | 1.6.1 | Submit project management plan | 1d | 2006-06-01 A | 2006-06-01 A |  | 100% | start no earlier than 2006-06-01 | Patrick | 8h | 8h |
| 154 | 1.6.2 | Submit communications plan | 1d | 2006-06-01 A | 2006-06-01 A |  | 100% | start no earlier than 2006-06-01 | Patrick | 8h | 8h |
| 155 | 1.6.3 | Submit risk management matrix | 1d | 2006-06-01 A | 2006-06-01 A |  | 100% | start no earlier than 2006-06-01 | Patrick | 8h | 8h |
| 156 | 1.6.4 | Submit draft use case document | 1d | 2006-07-03 A | 2006-07-03 A |  | 100% | start no earlier than 2006-07-03 | Patrick | 8h | 8h |
| 157 | 1.6.5 | Submit final use case document | 1d | 2006-08-01 A | 2006-08-01 A |  | 100% | start no earlier than 2006-08-01 | Patrick | 8h | 8h |
| 158 | 1.6.6 | Submit draft requirements and specifications document | 1d | 2006-06-01 A | 2006-06-01 A |  | 100% | start no earlier than 2006-06-01 | Patrick | 8h | 8h |
| 159 | 1.6.7 | Submit final requirements and specifications document | 1d | 2006-07-03 A | 2006-07-03 A |  | 100% | start no earlier than 2006-07-03 | Patrick | 8h | 8h |
| 160 | 1.6.8 | Submit draft UML model | 1d | 2006-08-01 A | 2006-08-01 A |  | 100% | start no earlier than 2006-08-01 | Patrick | 8h | 8h |
| 161 | 1.6.9 | Submit draft API | 1d | 2006-11-01 A | 2006-11-01 A |  | 100% | start no earlier than 2006-11-01 | Patrick | 8h | 8h |
| 162 | 1.6.10 | Submit XMI file | 1d | 2006-10-02 A | 2006-10-02 A |  | 100% | start no earlier than 2006-10-02 | Patrick | 8h | 8h |
| 163 | 1.6.11 | Submit CDE use report | 1d | 2006-11-01 A | 2006-11-01 A |  | 100% | start no earlier than 2006-11-01 | Patrick | 8h | 8h |
| 164 | 1.6.12 | Submit draft test approach | 1d | 2006-06-01 A | 2006-06-01 A |  | 100% | start no earlier than 2006-06-01 | Patrick | 8h | 8h |
| 165 | 1.6.13 | Submit final test approach | 1d | 2006-07-03 A | 2006-07-03 A |  | 100% | start no earlier than 2006-07-03 | Patrick | 8h | 8h |
| 166 | 1.6.14 | Submit draft datasets | 1d | 2006-08-01 A | 2006-08-01 A |  | 100% | start no earlier than 2006-08-01 | Patrick | 8h | 8h |
| 167 | 1.6.15 | Submit final datasets | 1d | 2006-11-01 A | 2006-11-01 A |  | 100% | start no earlier than 2006-11-01 | Patrick | 8h | 8h |
| 168 | 1.6.16 | Submit draft prototype code | 1d | 2006-08-01 A | 2006-08-01 A |  | 100% | start no earlier than 2006-08-01 | Patrick | 8h | 8h |
| 169 | 1.6.17 | Submit final prototype code | 1d | 2006-11-01 A | 2006-11-01 A |  | 100% | start no earlier than 2006-11-01 | Patrick | 8h | 8h |
| 170 | 1.6.18 | Submit testing report for draft prototype | 1d | 2006-08-01 A | 2006-08-01 A |  | 100% | start no earlier than 2006-08-01 | Patrick | 8h | 8h |
| 171 | 1.6.19 | Submit testing report for final prototype | 1d | 2006-11-01 A | 2006-11-01 A |  | 100% | start no earlier than 2006-11-01 | Patrick | 8h | 8h |
| 172 | 1.6.20 | Submit technical/architectural guide | 1d | 2006-05-02 A | 2006-05-02 A |  | 100% |  | Patrick | 8h | 8h |

| ID | WBS | Task | Duration | Start | Finish | Predecessors | Complete | Constraint | Resources | Work | Actual work |
| --- | --- | --- | --- | --- | --- | --- | --- | --- | --- | --- | --- |
| 173 | 2 | **Phase 1 wrapup** | 132d | 2006-05-01 A | 2006-10-31 A |  | 100% |  |  | 3048h | 3048h |
| 174 | 2.1 | **GUI** | 114d | 2006-05-01 A | 2006-10-05 A |  | 100% |  | Sanjeev | 360h | 360h |
| 175 | 2.1.1 | Discovery | 5d | 2006-09-27 A | 2006-10-03 A |  | 100% | start no earlier than 2006-09-27 | Sanjeev | 40h | 40h |
| 176 | 2.1.2 | **Simplified GUI XML config** | 2d | 2006-10-04 A | 2006-10-05 A |  | 100% |  | Sanjeev | 48h | 48h |
| 177 | 2.1.2.1 | Tumor registry | 2d | 2006-10-04 A | 2006-10-05 A |  | 100% | start no earlier than 2006-10-04 | Sanjeev | 16h | 16h |
| 178 | 2.1.2.2 | SNP | 2d | 2006-10-04 A | 2006-10-05 A |  | 100% | start no earlier than 2006-10-04 | Sanjeev | 16h | 16h |
| 179 | 2.1.3 | Java webstart | 10d | 2006-09-20 A | 2006-10-03 A |  | 100% | start no earlier than 2006-09-20 | Sanjeev | 80h | 80h |
| 180 | 2.1.4 | Error handling, code tightening | 5d | 2006-09-27 A | 2006-10-03 A |  | 100% | start no earlier than 2006-09-27 | Sanjeev | 40h | 40h |
| 181 | 2.1.5 | New extract with generalizations | 5d | 2006-09-27 A | 2006-10-03 A |  | 100% | start no earlier than 2006-09-27 | Sanjeev | 40h | 40h |
| 182 | 2.1.6 | Export results to file | 2d | 2006-05-01 A | 2006-05-02 A |  | 100% |  | Sanjeev | 16h | 16h |
| 183 | 2.2 | **Domain services** | 29d | 2006-09-11 A | 2006-10-19 A |  | 100% |  |  | 1184h | 1184h |
| 184 | 2.2.1 | **Tumor Registry** | 27d | 2006-09-11 A | 2006-10-17 A |  | 100% |  | Bill | 312h | 312h |
| 185 | 2.2.1.1 | Implement database | 5d | 2006-09-11 A | 2006-09-15 A |  | 100% |  | Bill | 40h | 40h |
| 186 | 2.2.1.2 | Implement service | 5d | 2006-10-09 A | 2006-10-13 A | 185 | 100% | start no earlier than 2006-10-09 | Sanjeev | 40h | 40h |
| 187 | 2.2.1.3 | Deployed | 2d | 2006-10-16 A | 2006-10-17 A | 186 | 100% | start no earlier than 2006-10-16 | Bill | 16h | 16h |
| 188 | 2.2.2 | **caTissue CORE** | 5d | 2006-10-09 A | 2006-10-13 A |  | 100% |  | Sanjeev | 80h | 80h |
| 189 | 2.2.2.1 | Regen grid service | 5d | 2006-10-09 A | 2006-10-13 A |  | 100% | start no earlier than 2006-10-09 | Sanjeev | 40h | 40h |
| 190 | 2.2.3 | **CAE** | 29d | 2006-09-11 A | 2006-10-19 A |  | 100% |  | Srini; Bill | 616h | 616h |
| 191 | 2.2.3.1 | Extend model | 5d | 2006-09-11 A | 2006-09-15 A |  | 100% |  | Bill | 40h | 40h |
| 192 | 2.2.3.2 | Register extension | 5d | 2006-10-09 A | 2006-10-13 A |  | 100% | start no earlier than 2006-10-09 | Bill | 40h | 40h |
| 193 | 2.2.3.3 | Implement database | 5d | 2006-09-11 A | 2006-09-15 A |  | 100% |  | Bill | 40h | 40h |
| 194 | 2.2.3.4 | Implement service | 2d | 2006-10-16 A | 2006-10-17 A | 192 | 100% | start no earlier than 2006-10-13 | Srini | 16h | 16h |
| 195 | 2.2.3.5 | Deployed | 2d | 2006-10-18 A | 2006-10-19 A | 194 | 100% |  | Srini | 16h | 16h |
| 196 | 2.2.4 | **SNP** | 11d | 2006-09-27 A | 2006-10-11 A |  | 100% |  | Srini | 176h | 176h |
| 197 | 2.2.4.1 | Install database | 4d | 2006-09-27 A | 2006-10-02 A |  | 100% | start no earlier than 2006-09-27 | Srini | 32h | 32h |
| 198 | 2.2.4.2 | Implement service | 5d | 2006-10-03 A | 2006-10-09 A | 197 | 100% |  | Srini | 40h | 40h |
| 199 | 2.2.4.3 | Deploy | 2d | 2006-10-10 A | 2006-10-11 A | 198 | 100% |  | Srini | 16h | 16h |

| ID | WBS | Task | Duration | Start | Finish | Predecessors | Complete | Remaining | Total slack | Constraint | Resources | Work | Actual work |
| --- | --- | --- | --- | --- | --- | --- | --- | --- | --- | --- | --- | --- | --- |
| 200 | 2.3 | **Test data** | 19d | 2006-09-20 A | 2006-10-16 A |  | 100% |  |  |  | Mark | 312h | 312h |
| 201 | 2.3.1 | CAE | 5d | 2006-09-20 A | 2006-09-26 A |  | 100% |  |  |  | Mark | 40h | 40h |
| 202 | 2.3.2 | caTissue CORE | 5d | 2006-09-27 A | 2006-10-03 A |  | 100% |  |  | start no earlier than 2006-09-27 | Mark | 40h | 40h |
| 203 | 2.3.3 | SNP | 2.5d | 2006-10-10 A | 2006-10-12 A |  | 100% |  |  | start no earlier than 2006-10-10 | Ramakrishna; Srini | 40h | 40h |
| 204 | 2.3.4 | Tumor Registry | 5d | 2006-10-10 A | 2006-10-16 A |  | 100% |  |  | start no earlier than 2006-10-10 | Bill | 40h | 40h |
| 205 | 2.4 | **Real data** | 14d | 2006-09-27 A | 2006-10-16 A |  | 100% |  |  |  | Chris; Bill | 288h | 288h |
| 206 | 2.4.1 | caTissue CORE | 3d | 2006-09-27 A | 2006-09-29 A |  | 100% |  |  | start no earlier than 2006-09-27 | Chris | 24h | 24h |
| 207 | 2.4.2 | Tumor Registry | 5d | 2006-10-10 A | 2006-10-16 A |  | 100% |  |  | start no earlier than 2006-10-10 | Bill | 40h | 40h |
| 208 | 2.5 | **Testing** | 23d | 2006-09-27 A | 2006-10-27 A |  | 100% |  |  |  | Patrick | 824h | 824h |
| 209 | 2.5.1 | Construct DCQL queries | 20d | 2006-09-27 A | 2006-10-24 A |  | 100% |  |  | start no earlier than 2006-09-27 | Sanjeev; Srini; Patrick | 480h | 480h |
| 210 | 2.5.2 | Integration tests | 10d | 2006-09-27 A | 2006-10-10 A |  | 100% |  |  | start no earlier than 2006-09-27 | Patrick | 80h | 80h |
| 211 | 2.5.3 | QA | 10d | 2006-10-16 A | 2006-10-27 A |  | 100% |  |  | start no earlier than 2006-10-16 | Raj | 80h | 80h |
| 212 | 2.6 | **Deliverables** | 1d | 2006-10-31 A | 2006-10-31 A |  | 100% |  |  |  |  | 80h | 80h |
| 213 | 2.6.1 | **Silver compatibility** | 1d | 2006-10-31 A | 2006-10-31 A |  | 100% |  |  |  | Bill | 24h | 24h |
| 214 | 2.6.1.1 | Semantic XMI | 1d | 2006-10-31 A | 2006-10-31 A |  | 100% |  |  | start no earlier than 2006-10-31 | Bill | 8h | 8h |
| 215 | 2.6.1.2 | CDE use report | 1d | 2006-10-31 A | 2006-10-31 A |  | 100% |  |  | start no earlier than 2006-10-31 | Bill | 8h | 8h |
| 216 | 2.6.2 | Architecture guide | 1d | 2006-10-31 A | 2006-10-31 A |  | 100% |  |  | start no earlier than 2006-10-31 | Ram; Patrick | 16h | 16h |
| 217 | 2.6.3 | Final use cases | 1d | 2006-10-31 A | 2006-10-31 A |  | 100% |  |  | start no earlier than 2006-10-31 | Patrick | 8h | 8h |
| 218 | 2.6.4 | Final requirements | 1d | 2006-10-31 A | 2006-10-31 A |  | 100% |  |  | start no earlier than 2006-10-31 | Patrick | 8h | 8h |
| 219 | 2.6.5 | Draft datasets | 1d | 2006-10-31 A | 2006-10-31 A |  | 100% |  |  | start no earlier than 2006-10-31 | Patrick | 8h | 8h |
| 220 | 2.6.6 | Final datasets | 1d | 2006-10-31 A | 2006-10-31 A |  | 100% |  |  | start no earlier than 2006-10-31 | Patrick | 8h | 8h |
| 221 | 2.6.7 | Draft API | 1d | 2006-10-31 A | 2006-10-31 A |  | 100% |  |  | start no earlier than 2006-10-31 | Patrick | 8h | 8h |
| 222 | 3 | **Phase 2** | 140d | 2006-11-01 A | 2007-05-15 | 173 | 76% | 33.83d | 0d |  |  | 12264h | 9693.4h |
| 223 | 3.1 | **Inception** | 14d | 2006-11-01 A | 2006-11-20 A |  | 100% |  |  |  |  | 1008h | 1008h |
| 224 | 3.1.1 | Update use case document | 14d | 2006-11-01 A | 2006-11-20 A |  | 100% |  |  |  | Srini; Sanjeev; Bill | 336h | 336h |
| 225 | 3.1.2 | Update SRS | 14d | 2006-11-01 A | 2006-11-20 A |  | 100% |  |  |  | Srini; Sanjeev; Bill | 336h | 336h |
| 226 | 3.1.3 | Complete draft technical guide | 14d | 2006-11-01 A | 2006-11-20 A |  | 100% |  |  |  | Srini; Sanjeev; Bill | 336h | 336h |

| ID | WBS | Task | Duration | Start | Finish | Predecessors | Complete | Resources | Work | Actual work |
| --- | --- | --- | --- | --- | --- | --- | --- | --- | --- | --- |
| 227 | 3.2 | **Elaboration** | 30d | 2006-11-21 A | 2007-01-01 A | 223 | 100% |  | 4224h | 4224h |
| 228 | 3.2.1 | **Iteration 1** | 10d | 2006-11-21 A | 2006-12-04 A |  | 100% |  | 1920h | 1920h |
| 229 | 3.2.1.1 | **Project planning** | 10d | 2006-11-21 A | 2006-12-04 A |  | 100% | Patrick; Ram | 320h | 320h |
| 230 | 3.2.1.1.1 | Update risk matrix | 10d | 2006-11-21 A | 2006-12-04 A |  | 100% | Patrick; Ram | 160h | 160h |
| 231 | 3.2.1.2 | **Basic GUI** | 10d | 2006-11-21 A | 2006-12-04 A |  | 100% | Sanjeev | 160h | 160h |
| 232 | 3.2.1.2.1 | Migrate to caGrid 1.0 DQE | 10d | 2006-11-21 A | 2006-12-04 A |  | 100% | Sanjeev | 80h | 80h |
| 233 | 3.2.1.3 | Advanced GUI | 10d | 2006-11-21 A | 2006-12-04 A |  | 100% | Sanjeev | 80h | 80h |
| 234 | 3.2.1.4 | **DQE** | 10d | 2006-11-21 A | 2006-12-04 A |  | 100% | Srini | 400h | 400h |
| 235 | 3.2.1.4.1 | Migrate to caGrid 1.0 | 10d | 2006-11-21 A | 2006-12-04 A |  | 100% | Srini | 80h | 80h |
| 236 | 3.2.1.4.2 | **Extend DQE infrastructure** | 10d | 2006-11-21 A | 2006-12-04 A |  | 100% | Srini | 240h | 240h |
| 237 | 3.2.1.4.2.1 | Modify schema to allow comparison between attributes | 10d | 2006-11-21 A | 2006-12-04 A |  | 100% | Srini | 80h | 80h |
| 238 | 3.2.1.4.2.2 | Modify schema to add construct for return values | 10d | 2006-11-21 A | 2006-12-04 A |  | 100% | Srini | 80h | 80h |
| 239 | 3.2.1.5 | **Data services** | 10d | 2006-11-21 A | 2006-12-04 A |  | 100% | Srini; Bill | 240h | 240h |
| 240 | 3.2.1.5.1 | Migrate to caGrid 1.0 | 10d | 2006-11-21 A | 2006-12-04 A |  | 100% | Srini | 80h | 80h |
| 241 | 3.2.1.6 | **Datasets** | 10d | 2006-11-21 A | 2006-12-04 A |  | 100% | Mark; Chris | 560h | 560h |
| 242 | 3.2.1.6.1 | Begin getting GEMS for data | 10d | 2006-11-21 A | 2006-12-04 A |  | 100% | Mark | 80h | 80h |
| 243 | 3.2.1.6.2 | Begin getting lab data | 10d | 2006-11-21 A | 2006-12-04 A |  | 100% | Mark; Chris | 160h | 160h |
| 244 | 3.2.1.6.3 | Begin getting CAE data | 10d | 2006-11-21 A | 2006-12-04 A |  | 100% | Mark; Chris | 160h | 160h |
| 245 | 3.2.1.7 | Logging | 10d | 2006-11-21 A | 2006-12-04 A |  | 100% |  |  |  |
| 246 | 3.2.1.8 | Testing | 10d | 2006-11-21 A | 2006-12-04 A |  | 100% |  |  |  |
| 247 | 3.2.1.9 | Security | 10d | 2006-11-21 A | 2006-12-04 A |  | 100% |  |  |  |
| 248 | 3.2.1.10 | **Query sharing** | 10d | 2006-11-21 A | 2006-12-04 A |  | 100% | Bill | 160h | 160h |
| 249 | 3.2.1.10.1 | Update use case document with query sharing | 10d | 2006-11-21 A | 2006-12-04 A |  | 100% | Bill | 80h | 80h |
| 250 | 3.2.2 | **Iteration 2** | 20d | 2006-12-05 A | 2007-01-01 A | 228 | 100% |  | 2304h | 2304h |
| 251 | 3.2.2.1 | **Basic GUI** | 20d | 2006-12-05 A | 2007-01-01 A |  | 100% | Sanjeev | 480h | 480h |
| 252 | 3.2.2.1.1 | Implement interface for groups (AND/OR) | 20d | 2006-12-05 A | 2007-01-01 A |  | 100% | Sanjeev | 160h | 160h |
| 253 | 3.2.2.1.2 | Implement group DCQL generation (AND/OR) | 20d | 2006-12-05 A | 2007-01-01 A |  | 100% | Sanjeev | 160h | 160h |

| ID | WBS | Task | Duration | Start | Finish | Predecessors | Complete | Remaining | Total slack | Resources | Work | Actual work |
| --- | --- | --- | --- | --- | --- | --- | --- | --- | --- | --- | --- | --- |
| 254 | 3.2.2.2 | **Data services** | 10d | 2006-12-05 A | 2006-12-18 A |  | 100% |  |  | Bill; Srini | 464h | 464h |
| 255 | 3.2.2.2.1 | Create silver compatibility review submission package | 9d | 2006-12-05 A | 2006-12-15 A |  | 100% |  |  | Bill | 72h | 72h |
| 256 | 3.2.2.2.2 | Generate CDE use report | 9d | 2006-12-05 A | 2006-12-15 A |  | 100% |  |  | Bill | 72h | 72h |
| 257 | 3.2.2.2.3 | **Extend data service infrastructure** | 10d | 2006-12-05 A | 2006-12-18 A |  | 100% |  |  | Srini | 160h | 160h |
| 258 | 3.2.2.2.3.1 | Implement construct for return values | 10d | 2006-12-05 A | 2006-12-18 A |  | 100% |  |  | Srini | 80h | 80h |
| 259 | 3.2.2.3 | **Datasets** | 10d | 2006-12-05 A | 2006-12-18 A |  | 100% |  |  | Mark | 240h | 240h |
| 260 | 3.2.2.3.1 | Get pathology reports | 10d | 2006-12-05 A | 2006-12-18 A |  | 100% |  |  | Mark; Chris | 160h | 160h |
| 261 | 3.2.2.4 | **DQE** | 20d | 2006-12-05 A | 2007-01-01 A |  | 100% |  |  | Srini | 480h | 480h |
| 262 | 3.2.2.4.1 | Implement first pass at processor for return values | 20d | 2006-12-05 A | 2007-01-01 A |  | 100% |  |  | Srini | 160h | 160h |
| 263 | 3.2.2.4.2 | Implement construct for return values | 20d | 2006-12-05 A | 2007-01-01 A |  | 100% |  |  | Srini | 160h | 160h |
| 264 | 3.2.2.5 | **Query sharing** | 20d | 2006-12-05 A | 2007-01-01 A |  | 100% |  |  | Bill | 640h | 640h |
| 265 | 3.2.2.5.1 | Create UML model | 10d | 2006-12-05 A | 2006-12-18 A |  | 100% |  |  | Bill | 80h | 80h |
| 266 | 3.2.2.5.2 | Create database and hibernate mappings | 10d | 2006-12-05 A | 2006-12-18 A |  | 100% |  |  | Bill | 80h | 80h |
| 267 | 3.2.2.5.3 | Generate XML schemas | 20d | 2006-12-05 A | 2007-01-01 A |  | 100% |  |  | Bill | 160h | 160h |
| 268 | 3.2.2.5.4 | Create grid skeleton | 20d | 2006-12-05 A | 2007-01-01 A |  | 100% |  |  | Bill | 160h | 160h |
| 269 | 3.3 | **Construction** | 79d | 2007-01-02 A | 2007-04-20 | 227 | 80% | 15.92d | 0d |  | 5944h | 4461.4h |
| 270 | 3.3.1 | **Iteration 1** | 33d | 2007-01-02 A | 2007-02-15 A |  | 100% |  |  |  | 2176h | 2176h |
| 271 | 3.3.1.1 | **Basic GUI** | 20d | 2007-01-02 A | 2007-01-29 A |  | 100% |  |  | Sanjeev | 800h | 800h |
| 272 | 3.3.1.1.1 | Finish implementation of interface for groups (AND/OR) | 20d | 2007-01-02 A | 2007-01-29 A |  | 100% |  |  | Sanjeev | 160h | 160h |
| 273 | 3.3.1.1.2 | Finish implementation of group DCQL generation (AND/OR) | 20d | 2007-01-02 A | 2007-01-29 A |  | 100% |  |  | Sanjeev | 160h | 160h |
| 274 | 3.3.1.1.3 | Implement interface for query sharing | 20d | 2007-01-02 A | 2007-01-29 A |  | 100% |  |  | Sanjeev | 160h | 160h |
| 275 | 3.3.1.1.4 | Investigate rebuilding simple gui from saved query | 20d | 2007-01-02 A | 2007-01-29 A |  | 100% |  |  | Sanjeev | 160h | 160h |
| 276 | 3.3.1.2 | **Data services** | 33d | 2007-01-02 A | 2007-02-15 A |  | 100% |  |  | Srini; Sanjeev | 1056h | 1056h |
| 277 | 3.3.1.2.1 | Migrate to caGrid 1.0 release | 33d | 2007-01-02 A | 2007-02-15 A |  | 100% |  |  | Srini; Sanjeev | 528h | 528h |

| ID | WBS | Task | Type | Duration | Start | Finish | Predecessors | Complete | Remaining | Total slack | Free slack | Constraint | Resources | Work | Actual work |
| --- | --- | --- | --- | --- | --- | --- | --- | --- | --- | --- | --- | --- | --- | --- | --- |
| 278 | 3.3.1.3 | **Query sharing** |  | 10d | 2007-01-02 A | 2007-01-15 A |  | 100% |  |  |  |  |  |  |  |
| 279 | 3.3.1.3.1 | Complete query sharing |  | 10d | 2007-01-02 A | 2007-01-15 A |  | 100% |  |  |  |  |  |  |  |
| 280 | 3.3.1.4 | **DQE** |  | 20d | 2007-01-02 A | 2007-01-29 A |  | 100% |  |  |  |  | Srini | 320h | 320h |
| 281 | 3.3.1.4.1 | Implement return attributes |  | 20d | 2007-01-02 A | 2007-01-29 A |  | 100% |  |  |  |  | Srini | 160h | 160h |
| 282 | 3.3.2 | **Iteration 2** |  | 46d | 2007-02-16 A | 2007-04-20 | 270 | 69% | 14.39d | 0d |  |  |  | 3768h | 2285.4h |
| 283 | 3.3.2.1 | **GUI** |  | 46d | 2007-02-16 A | 2007-04-20 |  | 33% | 30.98d | 0d |  |  | Sanjeev | 840h | 328.16h |
| 284 | 3.3.2.1.1 | **Advanced GUI** |  | 5d | 2007-02-16 A | 2007-02-22 A |  | 100% |  |  |  |  | Sanjeev | 80h | 80h |
| 285 | 3.3.2.1.1.1 | Implement DCQL generation |  | 5d | 2007-02-16 A | 2007-02-22 A |  | 100% |  |  |  |  | Sanjeev | 40h | 40h |
| 286 | 3.3.2.1.2 | Disable return attributes for tissue specimen |  | 3d | 2007-02-28 | 2007-03-02 |  |  |  | 30d |  | start no earlier than 2007-02-28 | Sanjeev | 24h |  |
| 287 | 3.3.2.1.3 | **Implement drop-downs for filter values** |  | 10d | 2007-02-23 A | 2007-03-08 | 284 | 50% | 5d | 26d | 0d |  | Sanjeev | 160h | 80h |
| 288 | 3.3.2.1.3.1 | Implement enumerated value domain drop-downs |  | 5d | 2007-02-23 | 2007-03-01 |  |  |  | 31d |  |  | Sanjeev | 40h |  |
| 289 | 3.3.2.1.3.2 | Implement distinct value drop-downs |  | 5d | 2007-03-02 A | 2007-03-08 A | 288 | 100% |  |  |  |  | Sanjeev | 40h | 40h |
| 290 | 3.3.2.1.4 | Harden AND/OR (also across services) |  | 5d | 2007-03-09 | 2007-03-15 | 287 |  |  | 26d |  |  | Sanjeev | 40h |  |
| 291 | 3.3.2.1.5 | Hook into IdP service |  | 3d | 2007-03-16 A | 2007-03-20 A | 290 | 100% |  |  |  |  | Sanjeev | 24h | 24h |
| 292 | 3.3.2.1.6 | Implement 508 compliance |  | 3d | 2007-03-21 | 2007-03-23 | 291 |  |  | 20d |  |  | Sanjeev | 24h |  |
| 293 | 3.3.2.1.7 | Implement path report viewing |  | 3d | 2007-03-26 A | 2007-03-28 A | 292 | 100% |  |  |  |  | Sanjeev | 24h | 24h |
| 294 | 3.3.2.1.8 | Log user actions for testing |  | 5d | 2007-03-29 | 2007-04-04 | 293 |  |  | 0d |  |  |  |  |  |
| 295 | 3.3.2.1.9 | Finish AND/OR |  | 5d | 2007-04-05 | 2007-04-11 | 294 |  |  | 0d |  |  | Sanjeev | 40h |  |
| 296 | 3.3.2.1.10 | Implement upload of MRNs for querying |  | 7d | 2007-04-12 | 2007-04-20 | 295 |  |  | 0d |  |  | Sanjeev | 56h |  |
| 297 | 3.3.2.2 | **Distributed query** |  | 20d | 2007-02-16 A | 2007-03-15 |  | 99% | 0d | 26d |  |  | Srini | 320h | 320h |
| 298 | 3.3.2.2.1 | Harden implementation of return attributes |  | 10d | 2007-02-16 A | 2007-03-01 A |  | 100% |  |  |  |  | Srini | 80h | 80h |
| 299 | 3.3.2.2.2 | Finish implementation of AND/OR |  | 10d | 2007-03-02 A | 2007-03-15 A | 298 | 100% |  |  |  |  | Srini | 80h | 80h |
| 300 | 3.3.2.2.3 | Implement new predicates (e.g. fulltext) | milestone | 0d | 2007-03-15 | 2007-03-15 | 299 |  |  | 26d | 0d |  | Srini |  |  |
| 301 | 3.3.2.2.4 | Implement comparison between attributes | milestone | 0d | 2007-03-15 | 2007-03-15 | 300 |  |  | 26d |  |  | Srini |  |  |

| ID | WBS | Task | Duration | Start | Finish | Predecessors | Complete | Remaining | Total slack | Free slack | Constraint | Resources | Work | Actual work |
| --- | --- | --- | --- | --- | --- | --- | --- | --- | --- | --- | --- | --- | --- | --- |
| 302 | 3.3.2.3 | **Security** | 30d | 2007-02-16 A | 2007-03-29 |  | 33% | 20d | 16d |  |  | Srini | 520h | 200h |
| 303 | 3.3.2.3.1 | Add secure communication | 5d | 2007-02-16 A | 2007-02-22 A |  | 100% |  |  |  |  | Srini | 40h | 40h |
| 304 | 3.3.2.3.2 | Setup IdP service | 5d | 2007-02-23 A | 2007-03-01 A | 303 | 100% |  |  |  |  | Srini; Patrick | 80h | 80h |
| 305 | 3.3.2.3.3 | Setup gridgrouper | 5d | 2007-03-02 | 2007-03-08 | 304 |  |  | 16d | 0d |  | Srini | 40h |  |
| 306 | 3.3.2.3.4 | Implement coarse-grained authorization | 15d | 2007-03-09 | 2007-03-29 | 305 |  |  | 16d |  |  | Srini | 120h |  |
| 307 | 3.3.2.4 | **Query sharing** | 5d | 2007-03-19 | 2007-03-23 |  |  |  | 20d |  |  | Bill | 80h |  |
| 308 | 3.3.2.4.1 | Display filters of found query in text form | 5d | 2007-03-19 | 2007-03-23 |  |  |  | 20d |  | start no earlier than 2007-03-19 | Bill | 40h |  |
| 309 | 3.3.2.5 | **Data services** | 10d | 2007-02-26 A | 2007-03-09 |  | 99% | 0d | 0d |  |  | Srini; Sanjeev | 344h | 264h |
| 310 | 3.3.2.5.1 | Change Castor mappings for collections | 3d | 2007-02-28 A | 2007-03-02 A |  | 100% |  |  |  | start no earlier than 2007-02-28 | Srini | 24h | 24h |
| 311 | 3.3.2.5.2 | **caTIES** | 10d | 2007-02-26 A | 2007-03-09 A |  | 100% |  |  |  |  | Bill | 160h | 160h |
| 312 | 3.3.2.5.2.1 | Implement service | 10d | 2007-02-26 A | 2007-03-09 A |  | 100% |  |  |  | start no earlier than 2007-02-26 | Bill | 80h | 80h |
| 313 | 3.3.2.6 | **Datasets** | 33d | 2007-02-16 A | 2007-04-03 |  | 84% | 5.34d | 13d |  |  | Bill; Mark | 1664h | 1173.24h |
| 314 | 3.3.2.6.1 | Get MAW3 CAE data | 10d | 2007-02-16 A | 2007-03-01 A |  | 100% |  |  |  |  | Mark | 80h | 80h |
| 315 | 3.3.2.6.2 | Migrate into CAE database/service | 33d | 2007-02-16 A | 2007-04-03 | 314 | 30% | 23d | 13d |  |  | Mark | 264h | 80h |
| 316 | 3.3.2.6.3 | Migrate pathology reports into caTIES | 33d | 2007-02-16 A | 2007-04-03 A |  | 100% |  |  |  |  | Mark | 264h | 264h |
| 317 | 3.3.2.6.4 | Migrate SNP data into caIntegrator | 33d | 2007-02-16 A | 2007-04-03 A |  | 100% |  |  |  |  | Mark | 264h | 264h |
| 318 | 3.3.2.6.5 | Change MRN format | 33d | 2007-02-16 A | 2007-04-03 A |  | 100% |  |  |  |  | Mark | 264h | 264h |
| 319 | 3.4 | **Transition** | 17d | 2007-04-23 | 2007-05-15 | 269 |  |  | 0d |  |  |  | 1088h |  |
| 320 | 3.4.1 | **Documentation** | 17d | 2007-04-23 | 2007-05-15 |  |  |  | 0d |  |  |  | 952h |  |
| 321 | 3.4.1.1 | Training module | 17d | 2007-04-23 | 2007-05-15 |  |  |  | 0d |  |  | Mark | 136h |  |
| 322 | 3.4.1.2 | Installation guide | 17d | 2007-04-23 | 2007-05-15 |  |  |  | 0d |  |  | Bill | 136h |  |
| 323 | 3.4.1.3 | End user guide | 17d | 2007-04-23 | 2007-05-15 |  |  |  | 0d |  |  | Bill | 136h |  |
| 324 | 3.4.1.4 | Administration guide | 17d | 2007-04-23 | 2007-05-15 |  |  |  | 0d |  |  | Srini | 136h |  |
| 325 | 3.4.1.5 | Release notes | 17d | 2007-04-23 | 2007-05-15 |  |  |  | 0d |  |  | Srini | 136h |  |
| 326 | 3.4.1.6 | Case study | 17d | 2007-04-23 | 2007-05-15 |  |  |  | 0d |  |  | Patrick | 136h |  |
| 327 | 3.4.1.7 | Powerpoint | 17d | 2007-04-23 | 2007-05-15 |  |  |  | 0d |  |  | Patrick | 136h |  |
| 328 | 3.4.2 | System testing | 17d | 2007-04-23 | 2007-05-15 |  |  |  | 0d |  |  | Everyone | 136h |  |
